# 团建

Schedule from MS Project, 2021-11-01 to 2021-12-04, costs in ¥, A marks actual dates.

## Calendars

- Standard: Mon-Fri 08:00-12:00, 13:00-17:00; Sat-Sun off.

## Resources

| Resource | Rate |
| --- | --- |
| 王璐澈 | 40 |
| 荀宇欣 | 40 |
| 冯晴晴 | 40 |
| 汪嘉伟 | 40 |
| 李风洁 | 50 |
| 王奇 | 40 |
| 服务器 | 100000 |
| 团建 |  |

## Schedule

| ID | WBS | Task | Type | Duration | Start | Finish | Predecessors | Complete | Remaining | Actual start | Actual finish | Baseline start | Baseline finish | Baseline duration | Resources | Work | Actual work | Cost | Baseline cost | Actual cost |
| --- | --- | --- | --- | --- | --- | --- | --- | --- | --- | --- | --- | --- | --- | --- | --- | --- | --- | --- | --- | --- |
| 1 | 1 | **伴行** |  | 26d | 2021-11-01 A | 2021-12-04 |  | 59% | 10.75d |  |  | 2021-11-01 | 2021-12-04 | 26d | 服务器 | 704h | 396.8h | 130,200 | 130,200 | 17,072 |
| 2 | 1.1 | **客户模块** |  | 26d | 2021-11-01 A | 2021-12-04 |  | 86% | 3.76d |  |  | 2021-11-01 | 2021-12-04 | 26d |  | 480h | 396.8h | 20,760 | 20,760 | 17,072 |
| 3 | 1.1.1 | **登录注册** |  | 3d | 2021-11-18 | 2021-11-22 |  | 100% |  | 2021-11-01 | 2021-11-19 | 2021-11-18 | 2021-11-22 | 3d |  | 112h | 112h | 4,640 | 4,640 | 4,640 |
| 4 | 1.1.1.1 | 数据库表设计 | manual | 4d | 2021-11-01 A | 2021-11-04 A |  | 100% |  |  |  | 2021-11-01 | 2021-11-04 | 4d |  |  |  |  |  |  |
| 5 | 1.1.1.2 | 注册登录界面设计 | manual | 4d | 2021-11-02 A | 2021-11-05 A |  | 100% |  |  |  | 2021-11-02 | 2021-11-05 | 4d | 王璐澈 [50%]; 荀宇欣 [50%] | 32h | 32h | 1,280 | 1,280 | 1,280 |
| 6 | 1.1.1.3 | 注册登录代码编写 | manual | 6d | 2021-11-08 A | 2021-11-15 A | 5, 4 | 100% |  |  |  | 2021-11-08 | 2021-11-15 | 6d | 冯晴晴 | 48h | 48h | 1,920 | 1,920 | 1,920 |
| 7 | 1.1.1.4 | 交互测试 | manual | 2d | 2021-11-16 A | 2021-11-17 A | 6 | 100% |  |  |  | 2021-11-16 | 2021-11-17 | 2d | 冯晴晴 [50%]; 汪嘉伟 [50%] | 16h | 16h | 640 | 640 | 640 |
| 8 | 1.1.1.5 | 文档编写 | manual | 2d | 2021-11-18 A | 2021-11-19 A | 7 | 100% |  |  |  | 2021-11-18 | 2021-11-19 | 2d | 李风洁 | 16h | 16h | 800 | 800 | 800 |
| 9 | 1.1.2 | **信息管理模块** |  | 22d | 2021-11-01 | 2021-11-30 |  | 90% | 2.2d | 2021-11-02 |  | 2021-11-01 | 2021-11-30 | 22d |  | 160h | 140.8h | 6,400 | 6,400 | 5,632 |
| 10 | 1.1.2.1 | 信息管理界面设计 | manual | 4d | 2021-11-02 A | 2021-11-05 A |  | 100% |  |  |  | 2021-11-02 | 2021-11-05 | 4d | 王璐澈 [50%]; 荀宇欣 [50%] | 32h | 32h | 1,280 | 1,280 | 1,280 |
| 11 | 1.1.2.2 | 数据库表设计 | manual | 4d | 2021-11-02 A | 2021-11-05 A |  | 100% |  |  |  | 2021-11-02 | 2021-11-05 | 4d |  |  |  |  |  |  |
| 12 | 1.1.2.3 | 代码编写 | manual | 12d | 2021-11-08 A | 2021-11-23 A | 11 | 100% |  |  |  | 2021-11-08 | 2021-11-23 | 12d | 王璐澈 [50%]; 王奇 [50%] | 96h | 96h | 3,840 | 3,840 | 3,840 |
| 13 | 1.1.2.4 | 交互测试 | manual | 2d | 2021-11-24 A | 2021-11-25 | 12 | 80% | 0.4d |  |  | 2021-11-24 | 2021-11-25 | 2d | 荀宇欣 | 16h | 12.8h | 640 | 640 | 512 |
| 14 | 1.1.2.5 | 文档编写 | manual | 2d | 2021-11-26 | 2021-11-29 | 13 |  |  |  |  | 2021-11-26 | 2021-11-29 | 2d | 王璐澈 | 16h |  | 640 | 640 |  |
| 15 | 1.1.3 | **功能模块** |  | 26d | 2021-11-01 | 2021-12-04 |  | 73% | 6.93d | 2021-11-02 |  | 2021-11-01 | 2021-12-04 | 26d |  | 208h | 144h | 9,720 | 9,720 | 6,800 |
| 16 | 1.1.3.1 | 界面设计 | manual | 4d | 2021-11-02 A | 2021-11-05 A |  | 100% |  |  |  | 2021-11-02 | 2021-11-05 | 4d | 王璐澈 [50%]; 荀宇欣 [50%] | 32h | 32h | 1,280 | 1,280 | 1,280 |
| 17 | 1.1.3.2 | 定位功能编写 | manual | 2d | 2021-11-08 A | 2021-11-09 A | 16 | 100% |  |  |  | 2021-11-08 | 2021-11-09 | 2d | 李风洁 | 16h | 16h | 800 | 800 | 800 |
| 18 | 1.1.3.3 | 地点检索编写 | manual | 3d | 2021-11-10 A | 2021-11-12 A | 17 | 100% |  |  |  | 2021-11-10 | 2021-11-12 | 3d | 李风洁 | 24h | 24h | 1,200 | 1,200 | 1,200 |
| 19 | 1.1.3.4 | 路线规划编写 | manual | 2d | 2021-11-15 A | 2021-11-16 A | 18 | 100% |  |  |  | 2021-11-15 | 2021-11-16 | 2d | 李风洁 | 16h | 16h | 800 | 800 | 800 |
| 20 | 1.1.3.5 | 单元测试 | manual | 1d | 2021-11-17 A | 2021-11-17 A | 19 | 100% |  |  |  | 2021-11-17 | 2021-11-17 | 1d | 王奇 [50%]; 李风洁 [50%] | 8h | 8h | 360 | 360 | 360 |
| 21 | 1.1.3.6 | 文档编写 | manual | 2d | 2021-11-18 A | 2021-11-19 A | 20 | 100% |  |  |  | 2021-11-18 | 2021-11-19 | 2d |  |  |  |  |  |  |
| 22 | 1.1.3.7 | **订单部分** |  | 22d | 2021-11-02 | 2021-12-02 |  | 50% | 11d | 2021-11-16 |  | 2021-11-02 | 2021-12-02 | 22d |  | 112h | 48h | 5,280 | 5,280 | 2,360 |
| 23 | 1.1.3.7.1 | 设计数据库表 | manual | 2d | 2021-11-16 A | 2021-11-17 A |  | 100% |  |  |  | 2021-11-16 | 2021-11-17 | 2d |  |  |  |  |  |  |
| 24 | 1.1.3.7.2 | 创建订单编写 | manual | 4d | 2021-11-17 A | 2021-11-22 A | 11, 19 | 100% |  |  |  | 2021-11-17 | 2021-11-22 | 4d | 李风洁 | 32h | 32h | 1,600 | 1,600 | 1,600 |
| 25 | 1.1.3.7.3 | 行程显示的编写 | manual | 3d | 2021-11-24 A | 2021-11-26 | 24 | 33% | 2d |  |  | 2021-11-24 | 2021-11-26 | 3d | 李风洁 | 24h | 8h | 1,200 | 1,200 | 400 |
| 26 | 1.1.3.7.4 | 结束订单编写 | manual | 3d | 2021-11-24 A | 2021-11-26 | 24 | 33% | 2d |  |  | 2021-11-24 | 2021-11-26 | 3d | 冯晴晴 [50%]; 李风洁 [50%] | 24h | 8h | 1,080 | 1,080 | 360 |
| 27 | 1.1.3.7.5 | 交互测试 | manual | 3d | 2021-11-29 | 2021-12-01 | 26 |  |  |  |  | 2021-11-29 | 2021-12-01 | 3d | 汪嘉伟 [50%]; 李风洁 [50%] | 24h |  | 1,080 | 1,080 |  |
| 28 | 1.1.3.7.6 | 文档编写 | manual | 1d | 2021-12-02 | 2021-12-02 | 27 |  |  |  |  | 2021-12-02 | 2021-12-02 | 1d | 王奇 | 8h |  | 320 | 320 |  |

Notes:
- 1: 这是摘要任务。使用摘要任务以帮助您在节中组织项目。
- 4: 这是里程碑任务。将任务工期设置为 0d 以标记项目中的事件。
- 11: 在其旁边带有图钉的任务为手动计划任务。当您不想让 Project 移动任务时请使用它们。如果您尚未获得所有信息，您也可以在工期、开始和完成字段输入任意文本或将其保留为空。

| ID | WBS | Task | Type | Duration | Start | Finish | Predecessors | Baseline start | Baseline finish | Baseline duration | Resources | Work | Cost | Baseline cost |
| --- | --- | --- | --- | --- | --- | --- | --- | --- | --- | --- | --- | --- | --- | --- |
| 29 | 1.2 | **陪同师模块** |  | 12d | 2021-11-20 | 2021-12-04 |  | 2021-11-20 | 2021-12-04 | 12d |  | 224h | 9,440 | 9,440 |
| 30 | 1.2.1 | **信息管理模块** |  | 12d | 2021-11-20 | 2021-12-04 |  | 2021-11-20 | 2021-12-04 | 12d |  | 128h | 5,120 | 5,120 |
| 31 | 1.2.1.1 | 数据库表设计 | manual | 2d | 2021-11-20 | 2021-11-21 |  | 2021-11-20 | 2021-11-21 | 2d |  |  |  |  |
| 32 | 1.2.1.2 | 信息管理界面设计 | manual | 2d | 2021-11-21 | 2021-11-22 |  | 2021-11-21 | 2021-11-22 | 2d | 王璐澈 [50%]; 荀宇欣 [50%] | 16h | 640 | 640 |
| 33 | 1.2.1.3 | 信息管理编码 | manual | 4d | 2021-11-23 | 2021-11-26 | 31, 32 | 2021-11-23 | 2021-11-26 | 4d | 王璐澈 [50%]; 王奇 [50%] | 32h | 1,280 | 1,280 |
| 34 | 1.2.1.4 | 安全测试设计 | manual | 7d | 2021-11-22 | 2021-11-30 | 31 | 2021-11-22 | 2021-11-30 | 7d | 汪嘉伟 [50%]; 王奇 [50%] | 48h | 1,920 | 1,920 |
| 35 | 1.2.1.5 | 测试 | manual | 2d | 2021-11-29 | 2021-11-30 | 33, 34 | 2021-11-29 | 2021-11-30 | 2d | 王奇 | 16h | 640 | 640 |
| 36 | 1.2.1.6 | 文档编写 | manual | 2d | 2021-12-01 | 2021-12-02 | 35 | 2021-12-01 | 2021-12-02 | 2d | 王奇 | 16h | 640 | 640 |
| 37 | 1.2.2 | **订单部分** |  | 7d | 2021-11-27 | 2021-12-04 |  | 2021-11-27 | 2021-12-04 | 7d |  | 96h | 4,320 | 4,320 |
| 38 | 1.2.2.1 | 数据库表设计 | manual | 2d | 2021-11-27 | 2021-11-28 |  | 2021-11-27 | 2021-11-28 | 2d |  |  |  |  |
| 39 | 1.2.2.2 | 界面设计 | manual | 3d | 2021-11-20 | 2021-11-23 |  | 2021-11-20 | 2021-11-23 | 3d | 王璐澈 | 24h | 960 | 960 |
| 40 | 1.2.2.3 | 接受订单编写 | manual | 4d | 2021-11-29 | 2021-12-02 | 24, 38, 39 | 2021-11-29 | 2021-12-02 | 4d | 李风洁 | 32h | 1,600 | 1,600 |
| 41 | 1.2.2.4 | 行程显示编写 | manual | 2d | 2021-11-23 | 2021-11-24 | 24 | 2021-11-23 | 2021-11-24 | 2d | 李风洁 | 16h | 800 | 800 |
| 42 | 1.2.2.5 | 交互测试 | manual | 3d | 2021-11-25 | 2021-11-29 | 41 | 2021-11-25 | 2021-11-29 | 3d | 王奇 | 24h | 960 | 960 |
